# PROJET MADERA - Planning Prévisionnel - V01

Schedule from MS Project, 2018-12-10 to 2021-10-01, status date 2019-04-26, 7 hours a day, costs in €, A marks actual dates.

## Calendars

- Standard: Mon-Fri 09:00-12:00, 14:00-18:00; Sat-Sun off. Exceptions (off unless hours are given): 2019-06-29 09:00-12:00, 14:00-18:00, 2019-07-13 09:00-12:00, 14:00-18:00, 2019-07-20 09:00-12:00, 14:00-18:00, 2019-08-03 09:00-12:00, 14:00-18:00, 2019-08-17 09:00-12:00, 14:00-18:00, 2019-09-07 09:00-12:00, 14:00-18:00, 2019-09-14 09:00-12:00, 14:00-18:00, 2019-09-21 09:00-12:00, 14:00-18:00, 2019-10-05 09:00-12:00, 14:00-18:00, 2019-11-23 09:00-12:00, 14:00-18:00, 2019-11-30 09:00-12:00, 14:00-18:00, 2019-12-25, 2020-01-01.

## Resources

| Resource | Group | Rate | Cost per use |
| --- | --- | --- | --- |
| Chef de Projet (SEB) | Alt | 60 |  |
| Assistant Chef de Projet (SEB) | Alt | 40 |  |
| Développeur (SEB) | Alt | 40 |  |
| Assistant Chef de Projet (SEB) 2 | Alt | 40 |  |
| Chef de Projet (SEB) 2 | Alt | 60 |  |
| Chef de Projet (QUE) | Alt | 60 |  |
| Assistant Chef de Projet (QUE) | Alt | 40 |  |
| Développeur (QUE) | Alt | 40 |  |
| Chef de Projet (QUE) 2 | Alt | 60 |  |
| Assistant Chef de Projet (QUE) 2 | Alt | 40 |  |
| Pierre (Tech. HelpDesk) | INFO | 40 |  |
| Christophe (RI) | INFO | 60 |  |
| Claire (Chef-Projet) | INFO | 60 |  |
| Fabrice (RIL) | INFO | 40 |  |
| Martine (RIL) | INFO | 40 |  |
| Richard (COMM) | COMM | 40 |  |
| Arnaud (COMM) | COMM | 40 |  |
| Morgane (COMM) | COMM | 40 |  |
| Paul (COMM) | COMM | 40 |  |
| Anais (COMM) | COMM | 40 |  |
| Philippe (RESCOMM) | COMM | 60 |  |
| Mathieu (RESBE) | BE | 60 |  |
| Fabrice (MAINT) | Maintenance | 40 |  |
| Martine (MAINT) | Maintenance | 40 |  |
| Licence Visual-Studio Professional 2019 |  | 4796 | 4796 |
| Licence ArchiFacile.com (pro) |  | 240 | 240 |
| Hébergement |  | 120 | 120 |
| Déploiement (Android) |  | 25 | 25 |
| Développeuse (ARU) | Alt | 40 |  |
| Assitant chef de projet (ARU) | Alt | 40 |  |
| Chef de projet (ARU) | Alt | 60 |  |
| Développeur (API) | Alt | 40 |  |
| Assistant Chef de projet (API) | Alt | 40 |  |
| Chef de projet (API) | Alt | 60 |  |

## Schedule

| ID | WBS | Task | Type | Duration | Start | Finish | Predecessors | Complete | Remaining | Total slack | Constraint | Deadline | Resources | Work | Actual work | Cost | Actual cost |
| --- | --- | --- | --- | --- | --- | --- | --- | --- | --- | --- | --- | --- | --- | --- | --- | --- | --- |
| 1 | 1 | **MADERA** |  | 526d? | 2018-12-10 A | 2020-12-01 |  | 19% | 427.57d? |  | start no earlier than 2018-12-10 |  |  | 1345h | 188h | 64,510 | 9,010 |
| 2 | 1.1 | **Pré-Etude** |  | 429d? | 2018-12-10 A | 2020-07-17 |  | 20% | 344.71d? | 315d | start no earlier than 2018-12-10 |  |  | 1086h | 188h | 51,350 | 9,010 |
| 3 | 1.1.1 | **Livrable 01 - Analyse Fonctionnelle** |  | 127d | 2018-12-10 A | 2019-06-05 A |  | 100% |  |  | start no earlier than 2018-12-10 |  |  | 188h | 188h | 9,010 | 9,010 |
| 4 | 1.1.1.1 | **PMP** |  | 71d | 2018-12-10 A | 2019-03-18 A |  | 100% |  |  | start no earlier than 2018-12-10 |  |  | 109h | 109h | 4,820 | 4,820 |
| 5 | 1.1.1.1.1 | Note de Cadrage |  | 5.71d | 2018-12-10 A | 2018-12-17 A |  | 100% |  |  | must start on 2018-12-10 |  | Assistant Chef de Projet (QUE) [20%] | 8h | 8h | 320 | 320 |
| 6 | 1.1.1.1.2 | Reformulation du Besoin (contexte) |  | 20h | 2018-12-17 A | 2018-12-20 A |  | 100% |  |  | finish no earlier than 2018-12-17 |  | Assistant Chef de Projet (QUE) [20%] | 4h | 4h | 160 | 160 |
| 7 | 1.1.1.1.3 | Structure de l'équipe (Fiches de Poste) |  | 15h | 2018-12-19 A | 2018-12-21 A |  | 100% |  |  | finish no earlier than 2018-12-19 |  | Assistant Chef de Projet (QUE) [20%] | 3h | 3h | 120 | 120 |
| 8 | 1.1.1.1.4 | Gestion du système Documentaire |  | 10h | 2019-02-11 A | 2019-02-12 A |  | 100% |  |  | start no earlier than 2019-02-11 |  | Assistant Chef de Projet (QUE) [20%] | 2h | 2h | 80 | 80 |
| 9 | 1.1.1.1.5 | Planning Prévisionnel |  | 25d | 2019-01-02 A | 2019-02-05 A | 7 | 100% |  |  | start no earlier than 2019-01-02 |  | Assistant Chef de Projet (QUE) [20%] | 35h | 35h | 1,400 | 1,400 |
| 10 | 1.1.1.1.6 | Indicateurs de pilotage / suivi de projet / Indicateurs de réussite |  | 2.14d | 2019-02-26 A | 2019-02-28 A | 9 | 100% |  |  |  |  | Assistant Chef de Projet (QUE) [20%] | 3h | 3h | 120 | 120 |
| 11 | 1.1.1.1.7 | WBS |  | 2.86d | 2019-01-30 A | 2019-02-08 A | 9 | 100% |  |  | finish no earlier than 2019-02-01 |  | Assistant Chef de Projet (QUE) [20%] | 4h | 4h | 160 | 160 |
| 12 | 1.1.1.1.8 | RBS |  | 2.86d | 2019-01-29 A | 2019-02-13 A | 11 | 100% |  |  |  |  | Assistant Chef de Projet (QUE) [20%] | 4h | 4h | 160 | 160 |
| 13 | 1.1.1.1.9 | PBS |  | 5d | 2019-03-05 A | 2019-03-11 A | 12 | 100% |  |  |  |  | Assistant Chef de Projet (QUE) [20%] | 7h | 7h | 280 | 280 |
| 14 | 1.1.1.1.10 | Approche de Rentabilisation (ROI) |  | 10d | 2019-02-04 A | 2019-02-15 A |  | 100% |  |  |  |  | Chef de Projet (SEB) [20%] | 14h | 14h | 840 | 840 |
| 15 | 1.1.1.1.11 | SWOT |  | 1.43d | 2019-01-29 A | 2019-02-19 A |  | 100% |  |  |  |  | Assistant Chef de Projet (QUE) [20%]; Chef de Projet (SEB) [20%] | 4h | 4h | 200 | 200 |
| 16 | 1.1.1.1.12 | Analyse des risques |  | 5d | 2019-02-12 A | 2019-02-18 A | 15 | 100% |  |  | start no earlier than 2019-02-12 |  | Assistant Chef de Projet (QUE) [20%]; Chef de Projet (SEB) [20%] | 14h | 14h | 700 | 700 |
| 17 | 1.1.1.1.13 | Provision pour Risque [PMP] |  | 5d | 2019-03-12 A | 2019-03-18 A |  | 100% |  |  | start no earlier than 2019-03-12 |  | Assistant Chef de Projet (QUE) [20%] | 7h | 7h | 280 | 280 |
| 18 | 1.1.1.2 | **Analyse Fonctionnelle** |  | 22d | 2019-03-22 A | 2019-04-22 A |  | 100% |  |  |  |  |  | 48h | 48h | 2,670 | 2,670 |
| 19 | 1.1.1.2.1 | Bête à Cornes |  | 1.43d | 2019-03-22 A | 2019-03-25 A |  | 100% |  |  |  |  | Chef de Projet (SEB) [20%] | 2h | 2h | 120 | 120 |
| 20 | 1.1.1.2.2 | Diagramme de la Pieuvre |  | 2.86d | 2019-03-25 A | 2019-03-28 A | 19 | 100% |  |  |  |  | Chef de Projet (SEB) [20%] | 4h | 4h | 240 | 240 |
| 21 | 1.1.1.2.3 | Liste des Fonctions |  | 10d | 2019-03-26 A | 2019-04-11 A | 20 | 100% |  |  |  |  | Chef de Projet (SEB) [20%] | 14h | 14h | 840 | 840 |
| 22 | 1.1.1.2.4 | Diagramme des Cas d'Utilisations |  | 7.5d | 2019-04-02 A | 2019-04-22 A | 21 | 100% |  |  | start no earlier than 2019-03-01 |  | Assistant Chef de Projet (QUE) [20%]; Chef de Projet (SEB) [20%] | 21h | 21h | 1,050 | 1,050 |
| 23 | 1.1.1.2.5 | Provision pour Risque [Ana. Fonct.] |  | 5d | 2019-04-16 A | 2019-04-22 A |  | 100% |  |  | start no earlier than 2019-04-16 |  | Chef de Projet (SEB) [20%] | 7h | 7h | 420 | 420 |
| 24 | 1.1.1.3 | **Autres Tâches** |  | 15.5d | 2019-04-26 A | 2019-05-17 A |  | 100% |  |  |  |  |  | 31h | 31h | 1,520 | 1,520 |
| 25 | 1.1.1.3.1 | Glossaire |  | 2.14d | 2019-04-26 A | 2019-04-30 A |  | 100% |  |  | start no earlier than 2019-04-04 |  | Assistant Chef de Projet (QUE) [20%] | 3h | 3h | 120 | 120 |
| 26 | 1.1.1.3.2 | Rédaction du Document |  | 2.5d | 2019-04-30 A | 2019-05-02 A | 25 | 100% |  |  |  |  | Assistant Chef de Projet (QUE) [20%]; Chef de Projet (SEB) [20%] | 7h | 7h | 350 | 350 |
| 27 | 1.1.1.3.3 | Rédaction de la Présentation |  | 2.5d | 2019-05-07 A | 2019-05-09 A | 26 | 100% |  |  | start no earlier than 2019-03-13 |  | Assistant Chef de Projet (QUE) [20%]; Chef de Projet (SEB) [20%] | 7h | 7h | 350 | 350 |
| 28 | 1.1.1.3.4 | Analyse et correction complémentaires |  | 2.5d | 2019-05-14 A | 2019-05-16 A | 26, 27 | 100% |  |  |  |  | Assistant Chef de Projet (QUE) [20%]; Chef de Projet (SEB) [20%] | 7h | 7h | 350 | 350 |
| 29 | 1.1.1.3.5 | Provision pour Risque [Aut. Tâches] |  | 2.5d | 2019-05-15 A | 2019-05-17 A |  | 100% |  |  | start no earlier than 2019-05-15 |  | Assistant Chef de Projet (QUE) [20%]; Chef de Projet (SEB) [20%] | 7h | 7h | 350 | 350 |
| 30 | 1.1.1.4 | Livraison L01 | milestone | 0d | 2019-05-22 A | 2019-05-22 A |  | 100% |  |  | must start on 2019-04-22 | 2019-05-22 |  |  |  |  |  |
| 31 | 1.1.1.5 | Présentation L01 | milestone | 0d | 2019-06-05 A | 2019-06-05 A |  | 100% |  |  | must start on 2019-06-05 | 2019-06-05 |  |  |  |  |  |

| ID | WBS | Task | Type | Duration | Start | Finish | Predecessors | Total slack | Free slack | Constraint | Deadline | Resources | Work | Cost |
| --- | --- | --- | --- | --- | --- | --- | --- | --- | --- | --- | --- | --- | --- | --- |
| 32 | 1.1.2 | **Livrable 02 - Etude Technique (Architecture d'Application, IHM)** |  | 92d? | 2019-06-15 | 2019-10-10 |  | 0d |  | start no earlier than 2019-06-06 |  |  | 203h | 10,520 |
| 33 | 1.1.2.1 | Réunion de l'équipe [1] | milestone | 0d | 2019-06-15 | 2019-06-15 |  | 0d |  | must start on 2019-06-15 |  | Assistant Chef de Projet (SEB) [20%]; Chef de Projet (QUE) [20%] |  |  |
| 34 | 1.1.2.2 | Réunion de l'équipe [2] | milestone | 0d | 2019-06-29 | 2019-06-29 |  | 599d |  | start no earlier than 2019-06-29 |  | Chef de Projet (QUE) [20%]; Assistant Chef de Projet (SEB) [20%] |  |  |
| 35 | 1.1.2.3 | Réunion de l'équipe [3] | milestone | 0d | 2019-07-13 | 2019-07-13 |  | 588d |  | start no earlier than 2019-07-13 |  | Assistant Chef de Projet (SEB) [20%]; Chef de Projet (QUE) [20%] |  |  |
| 36 | 1.1.2.4 | Réunion de l'équipe [4] | milestone | 0d | 2019-07-20 | 2019-07-20 |  | 582d |  | start no earlier than 2019-07-20 |  | Assistant Chef de Projet (SEB) [20%]; Chef de Projet (QUE) [20%] |  |  |
| 37 | 1.1.2.5 | Réunion de l'équipe [5] | milestone | 0d | 2019-08-03 | 2019-08-03 |  | 571d |  | start no earlier than 2019-08-03 |  | Assistant Chef de Projet (SEB) [20%]; Chef de Projet (QUE) [20%] |  |  |
| 38 | 1.1.2.6 | Réunion avec le BE (validation de l'IHM) | milestone | 0d | 2019-08-30 | 2019-08-30 | 45 | 549d |  |  |  | Mathieu (RESBE) [80%] |  |  |
| 39 | 1.1.2.7 | Réunion de l'équipe [6] | milestone | 0d | 2019-08-17 | 2019-08-17 |  | 560d |  | start no earlier than 2019-08-17 |  | Assistant Chef de Projet (SEB) [20%]; Chef de Projet (QUE) [20%] |  |  |
| 40 | 1.1.2.8 | Réunion de l'équipe [7] | milestone | 0d | 2019-09-14 | 2019-09-14 |  | 538d |  | start no earlier than 2019-09-14 |  | Assistant Chef de Projet (SEB) [20%]; Chef de Projet (QUE) [20%] |  |  |
| 41 | 1.1.2.9 | Réunion de l'équipe [8] | milestone | 0d | 2019-09-21 | 2019-09-21 |  | 528.67d | 0d | start no earlier than 2019-09-21 |  | Assistant Chef de Projet (SEB) [20%]; Chef de Projet (QUE) [20%] |  |  |
| 42 | 1.1.2.10 | Réunion de l'équipe [9] | milestone | 0d | 2019-10-05 | 2019-10-05 |  | 518.62d | 0d | start no earlier than 2019-10-05 |  | Chef de Projet (QUE) [20%]; Assistant Chef de Projet (SEB) [20%] |  |  |
| 43 | 1.1.2.11 | Liste des Fonctionnalités (primaire et secondaire) |  | 2.86d | 2019-07-01 | 2019-07-03 |  | 542.29d | 0d | start no earlier than 2019-07-01 |  | Chef de Projet (QUE) [20%] | 4h | 240 |
| 44 | 1.1.2.12 | Use Case Complet (Commercial) |  | 6.43d | 2019-07-03 | 2019-07-12 | 43 | 542.29d | 0d |  |  | Chef de Projet (QUE) [20%] | 9h | 540 |
| 45 | 1.1.2.13 | IHM + Description |  | 35.71d? | 2019-07-12 | 2019-08-30 | 44 | 538.29d | 0d |  |  | Chef de Projet (QUE) 2 [30%] | 75h | 4,500 |
| 46 | 1.1.2.14 | Règle de gestion |  | 2.86d? | 2019-09-02 | 2019-09-04 | 45 | 538.29d | 0d |  |  | Chef de Projet (QUE) 2 [30%] | 6h | 360 |
| 47 | 1.1.2.15 | Diagramme d'Activité |  | 4.29d? | 2019-09-04 | 2019-09-10 | 46 | 538.29d | 0d |  |  | Chef de Projet (QUE) 2 [30%] | 9h | 540 |
| 48 | 1.1.2.16 | Diagramme de Composant | inactive | 4.29d? | 2019-09-10 | 2019-09-14 | 47 | 537.57d |  |  |  | Chef de Projet (QUE) 2 [30%] | 9h | 540 |
| 49 | 1.1.2.17 | Diagramme d’objet |  | 5.71d? | 2019-06-28 | 2019-07-04 |  | 549.29d | 0d | start no earlier than 2019-06-28 |  | Assistant Chef de Projet (SEB) [20%] | 8h | 320 |
| 50 | 1.1.2.18 | MCD |  | 10d? | 2019-07-04 | 2019-07-17 | 49 | 549.29d | 0d |  |  | Assistant Chef de Projet (SEB) [20%] | 14h | 560 |
| 51 | 1.1.2.19 | Diagramme de Classe |  | 8.57d? | 2019-07-17 | 2019-07-29 | 50 | 549.29d | 0d |  |  | Assistant Chef de Projet (SEB) [20%] | 12h | 480 |
| 52 | 1.1.2.20 | Diagramme de Séquence |  | 14.29d? | 2019-07-29 | 2019-08-15 | 51 | 549.29d | 0d |  |  | Assistant Chef de Projet (SEB) [20%] | 20h | 800 |
| 53 | 1.1.2.21 | Diagramme de Package |  | 8.57d? | 2019-08-15 | 2019-09-09 | 52 | 539.29d | 1d |  |  | Assistant Chef de Projet (SEB) [20%] | 12h | 480 |
| 54 | 1.1.2.22 | Etude et Grille Décisionnelle (Outil, Language, BDD) |  | 3.57d? | 2019-09-10 | 2019-09-13 | 53, 47 | 538.29d |  |  |  | Assistant Chef de Projet (SEB) [20%]; Chef de Projet (QUE) [20%] | 10h | 500 |
| 55 | 1.1.2.23 | Rédaction du Document |  | 3.33d | 2019-09-21 | 2019-09-25 | 41 | 528.67d |  |  |  | Assistant Chef de Projet (SEB) 2 [30%]; Chef de Projet (QUE) 2 [30%] | 14h | 700 |
| 56 | 1.1.2.24 | Rédaction de la Présentation |  | 2.38d | 2019-10-05 | 2019-10-08 | 42 | 518.62d |  |  |  | Assistant Chef de Projet (SEB) 2 [30%]; Chef de Projet (QUE) 2 [30%] | 10h | 500 |
| 57 | 1.1.2.25 | Livraison L02 | milestone | 0d | 2019-09-27 | 2019-09-27 |  | 1d |  | start no earlier than 2019-09-27 | 2019-09-27 |  |  |  |
| 58 | 1.1.2.26 | Présentation L02 | milestone | 0d | 2019-10-10 | 2019-10-10 |  | 2d | 0d | start no earlier than 2019-10-10 | 2019-10-11 |  |  |  |
| 59 | 1.1.3 | Projet RESOTEL |  | 22d? | 2019-10-10 | 2019-11-08 | 58 | 384d | 0d | start no earlier than 2019-10-10 |  |  |  |  |

| ID | WBS | Task | Type | Duration | Start | Finish | Predecessors | Total slack | Free slack | Constraint | Resources | Work | Cost |
| --- | --- | --- | --- | --- | --- | --- | --- | --- | --- | --- | --- | --- | --- |
| 60 | 1.1.4 | **Livrable 02 - +Etude Complémentaire+** |  | 24.29d? | 2019-11-11 | 2019-12-11 |  | 384d |  |  |  | 74h | 3,600 |
| 61 | 1.1.4.1 | Réunion de l'équipe [01] | milestone | 0d | 2019-11-23 | 2019-11-23 |  | 485d |  | start no earlier than 2019-11-23 | Chef de Projet (QUE) [20%]; Assistant Chef de Projet (SEB) [20%] |  |  |
| 62 | 1.1.4.2 | Réunion de l'équipe [02] | milestone | 0d | 2019-11-30 | 2019-11-30 |  | 479d |  | start no earlier than 2019-11-30 | Chef de Projet (QUE) [20%]; Assistant Chef de Projet (SEB) [20%] |  |  |
| 63 | 1.1.4.3 | Etablissement du planning L03 - L 04 - Suite |  | 10d? | 2019-11-11 | 2019-11-22 | 59 | 384d | 0d |  | Chef de Projet (QUE) [20%] | 14h | 840 |
| 64 | 1.1.4.4 | Méthodologie Projet |  | 15d? | 2019-11-11 | 2019-11-28 | 59 | 384d | 0d |  | Assistant Chef de Projet (SEB) [20%] | 21h | 840 |
| 65 | 1.1.4.5 | Reporting L02 |  | 5d? | 2019-11-23 | 2019-11-28 | 63 | 384d | 0d |  | Chef de Projet (QUE) [20%] | 7h | 420 |
| 66 | 1.1.4.6 | Définition Précise de l'architecture de l'application |  | 5d? | 2019-11-29 | 2019-12-04 | 64, 65 | 384d | 0d |  | Assistant Chef de Projet (SEB) [20%]; Chef de Projet (QUE) [20%] | 14h | 700 |
| 67 | 1.1.4.7 | Rédaction du Document |  | 2.38d | 2019-12-05 | 2019-12-09 | 66 | 384d | 0d |  | Assistant Chef de Projet (SEB) 2 [30%]; Assistant Chef de Projet (QUE) 2 [30%] | 10h | 400 |
| 68 | 1.1.4.8 | Rédaction de la Présentation |  | 1.9d | 2019-12-09 | 2019-12-11 | 67 | 384d | 0d |  | Assistant Chef de Projet (SEB) 2 [30%]; Chef de Projet (QUE) 2 [30%] | 8h | 400 |
| 69 | 1.1.4.9 | Livraison L02 - ANNEXE | milestone | 0d | 2019-12-09 | 2019-12-09 | 67 | 472.62d |  |  | Assistant Chef de Projet (SEB) [20%]; Chef de Projet (QUE) [20%] |  |  |
| 70 | 1.1.5 | **Livrable 03 - Développement Démo** |  | 107.71d? | 2019-12-11 | 2020-05-12 |  | 7.71d |  | start no earlier than 2019-10-14 |  | 440h | 19,940 |
| 71 | 1.1.5.1 | Les tâches associées à ce livrable (préciser entrants/extrants, indicateur(s) de suivi, ressource(s), amplitude, durée, cout) |  | 3.57d? | 2019-12-11 | 2019-12-16 | 68 | 384d | 0d |  | Assistant Chef de Projet (QUE) [20%] | 5h | 200 |
| 72 | 1.1.5.2 | Le budget prévisionnel du projet comprenant l’investissement, les charges, les coûts humains |  | 3.57d | 2019-12-16 | 2019-12-20 | 71 | 384d | 6.57d |  | Assistant Chef de Projet (QUE) [20%] | 5h | 200 |
| 73 | 1.1.5.3 | Réunion de l'équipe de travail | milestone | 0d | 2019-12-21 | 2019-12-21 |  | 0d |  | must start on 2019-12-21 | Assistant Chef de Projet (QUE) [20%]; Chef de Projet (SEB) [20%]; Développeur (API) [20%]; Développeuse (ARU) [20%] |  |  |
| 74 | 1.1.5.4 | Une politique de sécurisation de l’application en rédigeant un plan d’assurance qualité autour des processus de développement et de maintenance de l’application |  | 5d | 2019-12-23 | 2019-12-31 | 73 | 377.43d | 0d |  | Chef de Projet (SEB) [20%] | 7h | 420 |
| 75 | 1.1.5.5 | Un plan de gestion des risques de l’application |  | 5d | 2019-12-25 | 2020-01-01 | 73 | 376.43d | 0d |  | Développeuse (ARU) [20%] | 7h | 280 |
| 76 | 1.1.5.6 | Jalon - GO pour la mise en place |  | 1d? | 2020-01-02 | 2020-01-02 | 72, 74, 75 | 377.43d | 0d |  |  |  |  |
| 77 | 1.1.5.7 | Mise en place de la solution XAMARIN |  | 5d? | 2020-01-03 | 2020-01-09 | 76 | 377.43d | 0d |  | Assistant Chef de Projet (QUE) [20%]; Chef de Projet (SEB) [20%]; Développeur (API) [20%]; Développeuse (ARU) [20%] | 28h | 1,260 |
| 78 | 1.1.5.8 | Mise en place de la solution AZURE |  | 9d? | 2020-01-10 | 2020-01-30 | 77 | 367.43d | 0d |  | Assistant Chef de Projet (QUE) [20%]; Chef de Projet (SEB) [20%]; Développeur (API) [20%]; Développeuse (ARU) [20%] | 28h | 1,260 |
| 79 | 1.1.5.9 | Jalon - Go Développement | milestone | 0d | 2020-01-30 | 2020-01-30 | 78, 77 | 367.43d | 0d |  | Assistant Chef de Projet (QUE) [20%]; Chef de Projet (SEB) [20%]; Développeur (API) [20%]; Développeuse (ARU) [20%] |  |  |
| 80 | 1.1.5.10 | **[UF1] - Authentification** |  | 20d? | 2020-01-31 | 2020-02-27 |  | 367.43d |  |  |  | 56h | 2,800 |
| 81 | 1.1.5.10.1 | **Phase 1 - Développement** |  | 15d? | 2020-01-31 | 2020-02-20 |  | 367.43d |  |  |  | 42h | 2,100 |
| 82 | 1.1.5.10.1.1 | Développement - Itération |  | 7.5d? | 2020-01-31 | 2020-02-11 | 79 | 367.43d | 0d |  | Chef de Projet (SEB) [20%]; Développeur (API) [20%] | 21h | 1,050 |
| 83 | 1.1.5.10.1.2 | Jalon - Revue de l'itrétion | milestone | 0d | 2020-02-11 | 2020-02-11 | 82 | 367.43d | 0d |  |  |  |  |
| 84 | 1.1.5.10.1.3 | Développement - Itération |  | 7.5d? | 2020-02-11 | 2020-02-20 | 83 | 367.43d | 0d |  | Chef de Projet (SEB) [20%]; Développeur (API) [20%] | 21h | 1,050 |
| 85 | 1.1.5.10.1.4 | Jalon - Revue de l'itération | milestone | 0d | 2020-02-20 | 2020-02-20 | 84 | 367.43d | 0d |  |  |  |  |

| ID | WBS | Task | Type | Duration | Start | Finish | Predecessors | Total slack | Free slack | Resources | Work | Cost |
| --- | --- | --- | --- | --- | --- | --- | --- | --- | --- | --- | --- | --- |
| 86 | 1.1.5.10.2 | **Phase 2 - Test & Livraison** |  | 5d? | 2020-02-21 | 2020-02-27 |  | 367.43d |  |  | 14h | 700 |
| 87 | 1.1.5.10.2.1 | Rédaction Scénarios de Test |  | 2.5d? | 2020-02-21 | 2020-02-25 | 85 | 367.43d | 0d | Chef de Projet (SEB) [20%]; Développeur (API) [20%] | 7h | 350 |
| 88 | 1.1.5.10.2.2 | Test Unitaire & Fonctionnel |  | 2.5d? | 2020-02-25 | 2020-02-27 | 87 | 367.43d | 0d | Chef de Projet (SEB) [20%]; Développeur (API) [20%] | 7h | 350 |
| 89 | 1.1.5.10.2.3 | Jalon - Livraison | milestone | 0d | 2020-02-27 | 2020-02-27 | 88 | 367.43d | 0d |  |  |  |
| 90 | 1.1.5.11 | **[UF2] - Gestion Client** |  | 20d? | 2020-01-31 | 2020-02-27 |  | 367.43d |  |  | 56h | 2,240 |
| 91 | 1.1.5.11.1 | **Phase 1 - Développement** |  | 15d? | 2020-01-31 | 2020-02-20 |  | 367.43d |  |  | 42h | 1,680 |
| 92 | 1.1.5.11.1.1 | Développement - Itération |  | 7.5d? | 2020-01-31 | 2020-02-11 | 79 | 367.43d | 0d | Assistant Chef de Projet (QUE) [20%]; Développeuse (ARU) [20%] | 21h | 840 |
| 93 | 1.1.5.11.1.2 | Jalon - Revue de l'itrétion | milestone | 0d | 2020-02-11 | 2020-02-11 | 92 | 367.43d | 0d |  |  |  |
| 94 | 1.1.5.11.1.3 | Développement - Itération |  | 7.5d? | 2020-02-11 | 2020-02-20 | 93 | 367.43d | 0d | Assistant Chef de Projet (QUE) [20%]; Développeuse (ARU) [20%] | 21h | 840 |
| 95 | 1.1.5.11.1.4 | Jalon - Revue de l'itrétion | milestone | 0d | 2020-02-20 | 2020-02-20 | 94 | 367.43d | 0d |  |  |  |
| 96 | 1.1.5.11.2 | **Phase 2 - Test & Livraison** |  | 5d? | 2020-02-21 | 2020-02-27 |  | 367.43d |  |  | 14h | 560 |
| 97 | 1.1.5.11.2.1 | Rédaction Scénarios de Test |  | 2.5d? | 2020-02-21 | 2020-02-25 | 95 | 367.43d | 0d | Assistant Chef de Projet (QUE) [20%]; Développeuse (ARU) [20%] | 7h | 280 |
| 98 | 1.1.5.11.2.2 | Test Unitaire & Fonctionnel |  | 2.5d? | 2020-02-25 | 2020-02-27 | 97 | 367.43d | 0d | Assistant Chef de Projet (QUE) [20%]; Développeuse (ARU) [20%] | 7h | 280 |
| 99 | 1.1.5.11.2.3 | Jalon - Livraison | milestone | 0d | 2020-02-27 | 2020-02-27 | 98 | 367.43d | 0d |  |  |  |
| 100 | 1.1.5.12 | Jalon - Go Suite | milestone | 0d | 2020-02-27 | 2020-02-27 | 89, 99 | 367.43d | 0d | Assistant Chef de Projet (QUE) [20%]; Chef de Projet (SEB) [20%]; Développeur (API) [20%]; Développeuse (ARU) [20%] |  |  |
| 101 | 1.1.5.13 | **[UF3] - Gestion Projet** |  | 20d? | 2020-02-28 | 2020-03-26 |  | 367.43d |  |  | 56h | 2,800 |
| 102 | 1.1.5.13.1 | **Phase 1 - Développement** |  | 15d? | 2020-02-28 | 2020-03-19 |  | 367.43d |  |  | 42h | 2,100 |
| 103 | 1.1.5.13.1.1 | Développement - Itération |  | 7.5d? | 2020-02-28 | 2020-03-10 | 100 | 367.43d | 0d | Chef de Projet (SEB) [20%]; Développeuse (ARU) [20%] | 21h | 1,050 |
| 104 | 1.1.5.13.1.2 | Jalon - Revue de l'itrétion | milestone | 0d | 2020-03-10 | 2020-03-10 | 103 | 367.43d | 0d |  |  |  |
| 105 | 1.1.5.13.1.3 | Développement - Itération |  | 7.5d? | 2020-03-10 | 2020-03-19 | 104 | 367.43d | 0d | Chef de Projet (SEB) [20%]; Développeuse (ARU) [20%] | 21h | 1,050 |
| 106 | 1.1.5.13.1.4 | Jalon - Revue de l'itrétion | milestone | 0d | 2020-03-19 | 2020-03-19 | 105 | 367.43d | 0d |  |  |  |
| 107 | 1.1.5.13.2 | **Phase 2 - Test & Livraison** |  | 5d? | 2020-03-20 | 2020-03-26 |  | 367.43d |  |  | 14h | 700 |
| 108 | 1.1.5.13.2.1 | Rédaction Scénarios de Test |  | 2.5d? | 2020-03-20 | 2020-03-24 | 106 | 367.43d | 0d | Chef de Projet (SEB) [20%]; Développeuse (ARU) [20%] | 7h | 350 |
| 109 | 1.1.5.13.2.2 | Test Unitaire & Fonctionnel |  | 2.5d? | 2020-03-24 | 2020-03-26 | 108 | 367.43d | 0d | Chef de Projet (SEB) [20%]; Développeuse (ARU) [20%] | 7h | 350 |
| 110 | 1.1.5.13.2.3 | Jalon - Livraison | milestone | 0d | 2020-03-26 | 2020-03-26 | 109 | 367.43d | 0d |  |  |  |

| ID | WBS | Task | Type | Duration | Start | Finish | Predecessors | Total slack | Free slack | Resources | Work | Cost |
| --- | --- | --- | --- | --- | --- | --- | --- | --- | --- | --- | --- | --- |
| 111 | 1.1.5.14 | **[UF4] - Modélisation Plan** |  | 20d? | 2020-02-28 | 2020-03-26 |  | 367.43d |  |  | 56h | 2,240 |
| 112 | 1.1.5.14.1 | **Phase 1 - Développement** |  | 15d? | 2020-02-28 | 2020-03-19 |  | 367.43d |  |  | 42h | 1,680 |
| 113 | 1.1.5.14.1.1 | Développement - Itération |  | 7.5d? | 2020-02-28 | 2020-03-10 | 100 | 367.43d | 0d | Assistant Chef de Projet (QUE) [20%]; Développeur (API) [20%] | 21h | 840 |
| 114 | 1.1.5.14.1.2 | Jalon - Revue de l'itrétion | milestone | 0d | 2020-03-10 | 2020-03-10 | 113 | 367.43d | 0d |  |  |  |
| 115 | 1.1.5.14.1.3 | Développement - Itération |  | 7.5d? | 2020-03-10 | 2020-03-19 | 114 | 367.43d | 0d | Assistant Chef de Projet (QUE) [20%]; Développeur (API) [20%] | 21h | 840 |
| 116 | 1.1.5.14.1.4 | Jalon - Revue de l'itrétion | milestone | 0d | 2020-03-19 | 2020-03-19 | 115 | 367.43d | 0d |  |  |  |
| 117 | 1.1.5.14.2 | **Phase 2 - Test & Livraison** |  | 5d? | 2020-03-20 | 2020-03-26 |  | 367.43d |  |  | 14h | 560 |
| 118 | 1.1.5.14.2.1 | Rédaction Scénarios de Test |  | 2.5d? | 2020-03-20 | 2020-03-24 | 116 | 367.43d | 0d | Assistant Chef de Projet (QUE) [20%]; Développeur (API) [20%] | 7h | 280 |
| 119 | 1.1.5.14.2.2 | Test Unitaire & Fonctionnel |  | 2.5d? | 2020-03-24 | 2020-03-26 | 118 | 367.43d | 0d | Assistant Chef de Projet (QUE) [20%]; Développeur (API) [20%] | 7h | 280 |
| 120 | 1.1.5.14.2.3 | Jalon - Livraison | milestone | 0d | 2020-03-26 | 2020-03-26 | 119 | 367.43d | 0d |  |  |  |
| 121 | 1.1.5.15 | Jalon - Go Suite | milestone | 0d | 2020-03-26 | 2020-03-26 | 110, 120 | 367.43d | 0d | Assistant Chef de Projet (QUE) [20%]; Chef de Projet (SEB) [20%]; Développeur (API) [20%]; Développeuse (ARU) [20%] |  |  |
| 122 | 1.1.5.16 | **[UF5] - Gestion Devis & DT** |  | 20d? | 2020-03-27 | 2020-04-23 |  | 367.43d |  |  | 56h | 2,800 |
| 123 | 1.1.5.16.1 | **Phase 1 - Développement** |  | 15d? | 2020-03-27 | 2020-04-16 |  | 367.43d |  |  | 42h | 2,100 |
| 124 | 1.1.5.16.1.1 | Développement - Itération |  | 7.5d? | 2020-03-27 | 2020-04-07 | 121 | 367.43d | 0d | Chef de Projet (SEB) [20%]; Développeuse (ARU) [20%] | 21h | 1,050 |
| 125 | 1.1.5.16.1.2 | Jalon - Revue de l'itrétion | milestone | 0d | 2020-04-07 | 2020-04-07 | 124 | 367.43d | 0d |  |  |  |
| 126 | 1.1.5.16.1.3 | Développement - Itération |  | 7.5d? | 2020-04-07 | 2020-04-16 | 125 | 367.43d | 0d | Chef de Projet (SEB) [20%]; Développeuse (ARU) [20%] | 21h | 1,050 |
| 127 | 1.1.5.16.1.4 | Jalon - Revue de l'itrétion | milestone | 0d | 2020-04-16 | 2020-04-16 | 126 | 367.43d | 0d |  |  |  |
| 128 | 1.1.5.16.2 | **Phase 2 - Test & Livraison** |  | 5d? | 2020-04-17 | 2020-04-23 |  | 367.43d |  |  | 14h | 700 |
| 129 | 1.1.5.16.2.1 | Rédaction Scénarios de Test |  | 2.5d? | 2020-04-17 | 2020-04-21 | 127 | 367.43d | 0d | Chef de Projet (SEB) [20%]; Développeuse (ARU) [20%] | 7h | 350 |
| 130 | 1.1.5.16.2.2 | Test Unitaire & Fonctionnel |  | 2.5d? | 2020-04-21 | 2020-04-23 | 129 | 367.43d | 0d | Chef de Projet (SEB) [20%]; Développeuse (ARU) [20%] | 7h | 350 |
| 131 | 1.1.5.16.2.3 | Jalon - Livraison | milestone | 0d | 2020-04-23 | 2020-04-23 | 130 | 367.43d | 0d |  |  |  |
| 132 | 1.1.5.17 | **[UF6] - Synchronisation En-ligne/Hors-Ligne** |  | 20d? | 2020-03-27 | 2020-04-23 |  | 367.43d |  |  | 56h | 2,240 |
| 133 | 1.1.5.17.1 | **Phase 1 - Développement** |  | 15d? | 2020-03-27 | 2020-04-16 |  | 367.43d |  |  | 42h | 1,680 |
| 134 | 1.1.5.17.1.1 | Développement - Itération |  | 7.5d? | 2020-03-27 | 2020-04-07 | 121 | 367.43d | 0d | Assistant Chef de Projet (QUE) [20%]; Développeur (API) [20%] | 21h | 840 |
| 135 | 1.1.5.17.1.2 | Jalon - Revue de l'itrétion | milestone | 0d | 2020-04-07 | 2020-04-07 | 134 | 367.43d | 0d |  |  |  |
| 136 | 1.1.5.17.1.3 | Développement - Itération |  | 7.5d? | 2020-04-07 | 2020-04-16 | 135 | 367.43d | 0d | Assistant Chef de Projet (QUE) [20%]; Développeur (API) [20%] | 21h | 840 |
| 137 | 1.1.5.17.1.4 | Jalon - Revue de l'itrétion | milestone | 0d | 2020-04-16 | 2020-04-16 | 136 | 367.43d | 0d |  |  |  |

| ID | WBS | Task | Type | Duration | Start | Finish | Predecessors | Total slack | Free slack | Constraint | Deadline | Resources | Work | Cost |
| --- | --- | --- | --- | --- | --- | --- | --- | --- | --- | --- | --- | --- | --- | --- |
| 138 | 1.1.5.17.2 | **Phase 2 - Test & Livraison** |  | 5d? | 2020-04-17 | 2020-04-23 |  | 367.43d |  |  |  |  | 14h | 560 |
| 139 | 1.1.5.17.2.1 | Rédaction Scénarios de Test |  | 2.5d? | 2020-04-17 | 2020-04-21 | 137 | 367.43d | 0d |  |  | Assistant Chef de Projet (QUE) [20%]; Développeur (API) [20%] | 7h | 280 |
| 140 | 1.1.5.17.2.2 | Test Unitaire & Fonctionnel |  | 2.5d? | 2020-04-21 | 2020-04-23 | 139 | 367.43d | 0d |  |  | Assistant Chef de Projet (QUE) [20%]; Développeur (API) [20%] | 7h | 280 |
| 141 | 1.1.5.17.2.3 | Jalon - Livraison | milestone | 0d | 2020-04-23 | 2020-04-23 | 140 | 367.43d | 0d |  |  |  |  |  |
| 142 | 1.1.5.18 | Jalon - Go Rédaction | milestone | 0d | 2020-04-23 | 2020-04-23 | 131, 141 | 367.43d | 0d |  |  | Assistant Chef de Projet (QUE) [20%]; Chef de Projet (SEB) [20%]; Développeur (API) [20%]; Développeuse (ARU) [20%] |  |  |
| 143 | 1.1.5.19 | Rédaction du Document |  | 5d? | 2020-04-24 | 2020-04-30 | 142 | 367.43d | 0d |  |  | Assistant Chef de Projet (QUE) [20%]; Chef de Projet (SEB) [20%] | 14h | 700 |
| 144 | 1.1.5.20 | Rédaction de la Présentation |  | 3.57d | 2020-05-01 | 2020-05-06 | 143 | 367.43d |  |  |  | Assistant Chef de Projet (QUE) [20%]; Chef de Projet (SEB) [20%] | 10h | 500 |
| 145 | 1.1.5.21 | Livraison L03 | milestone | 0d | 2020-04-27 | 2020-04-27 |  | 0d |  | finish no earlier than 2020-04-27 | 2020-04-27 |  |  |  |
| 146 | 1.1.5.22 | Présentation L03 | milestone | 0d | 2020-05-12 | 2020-05-12 |  | 0d |  | finish no earlier than 2020-05-12 | 2020-05-12 |  |  |  |
| 147 | 1.1.6 | **Livrable 04 - Recettes & Déploiement** |  | 48d | 2020-05-13 | 2020-07-17 |  | 0d |  | start no earlier than 2020-05-13 |  |  | 181h | 8,280 |
| 148 | 1.1.6.1 | Réunion de l'équipe de travail | milestone | 0d | 2020-05-13 | 2020-05-13 |  | 0d |  | must start on 2020-05-13 |  | Assistant Chef de Projet (SEB) [20%]; Chef de Projet (QUE) [20%]; Développeur (API) [20%]; Développeuse (ARU) [20%] |  |  |
| 149 | 1.1.6.2 | Le plan de management du projet |  | 15d | 2020-05-13 | 2020-06-02 | 148 | 325.86d | 0d |  |  | Chef de Projet (QUE) [20%] | 21h | 1,260 |
| 150 | 1.1.6.3 | Les choix technologiques et la stratégie retenus pour l’architecture de l’application |  | 8.57d | 2020-05-13 | 2020-05-25 | 148 | 323.71d | 0d |  |  | Assistant Chef de Projet (SEB) [20%] | 12h | 480 |
| 151 | 1.1.6.4 | Les solutions techniques proposées |  | 8.57d | 2020-05-13 | 2020-05-25 | 148 | 323.71d | 0d |  |  | Développeur (API) [20%] | 12h | 480 |
| 152 | 1.1.6.5 | Un plan de déploiement et le suivi de la mise en place de l’outil (choix d’un outil de suivi des remarques et demandes d’évolution par exemple) |  | 8.57d | 2020-05-13 | 2020-05-25 | 148 | 332.29d | 0d |  |  | Développeuse (ARU) [20%] | 12h | 480 |
| 153 | 1.1.6.6 | Un plan de communication |  | 8.57d | 2020-06-03 | 2020-06-15 | 149 | 325.86d | 2.14d |  |  | Chef de Projet (QUE) [20%] | 12h | 720 |
| 154 | 1.1.6.7 | La politique de sécurisation de l’application |  | 8.57d | 2020-05-25 | 2020-06-05 | 150 | 323.71d | 0d |  |  | Assistant Chef de Projet (SEB) [20%] | 12h | 480 |
| 155 | 1.1.6.8 | Un PRA/PCA : un plan de sauvegarde des données, un plan de restauration, traçabilité des données… |  | 8.57d | 2020-05-25 | 2020-06-05 | 151 | 323.71d | 0d |  |  | Développeur (API) [20%] | 12h | 480 |
| 156 | 1.1.6.9 | Un Plan de gestion du Changement |  | 8.57d | 2020-05-25 | 2020-06-05 | 152 | 332.29d | 8.57d |  |  | Développeuse (ARU) [20%] | 12h | 480 |
| 157 | 1.1.6.10 | Le descriptif des outils à mettre en place pour assurer la continuité de service |  | 8.57d | 2020-06-05 | 2020-06-17 | 154 | 323.71d | 0d |  |  | Assistant Chef de Projet (SEB) [20%] | 12h | 480 |
| 158 | 1.1.6.11 | Un plan de formation des utilisateurs |  | 8.57d | 2020-06-05 | 2020-06-17 | 155 | 323.71d | 0d |  |  | Développeur (API) [20%] | 12h | 480 |
| 159 | 1.1.6.12 | Jalon - Go Suite | milestone | 0d | 2020-06-17 | 2020-06-17 | 153, 157, 156, 158 | 323.71d | 0d |  |  |  |  |  |
| 160 | 1.1.6.13 | Le retour d’expérience (REX) QCH |  | 5d | 2020-06-17 | 2020-06-24 | 159 | 323.71d | 0d |  |  | Chef de Projet (QUE) [20%] | 7h | 420 |
| 161 | 1.1.6.14 | Le retour d’expérience (REX) SEB |  | 5d | 2020-06-17 | 2020-06-24 | 159 | 323.71d | 0d |  |  | Assistant Chef de Projet (SEB) [20%] | 7h | 280 |
| 162 | 1.1.6.15 | Le retour d’expérience (REX) ARU |  | 5d | 2020-06-17 | 2020-06-24 | 159 | 323.71d | 0d |  |  | Développeuse (ARU) [20%] | 7h | 280 |
| 163 | 1.1.6.16 | Le retour d’expérience (REX) API |  | 5d | 2020-06-17 | 2020-06-24 | 159 | 323.71d | 0d |  |  | Développeur (API) [20%] | 7h | 280 |
| 164 | 1.1.6.17 | Jalon - Go Rédaction | milestone | 0d | 2020-06-24 | 2020-06-24 | 160, 161, 162, 163 | 323.71d | 0d |  |  |  |  |  |
| 165 | 1.1.6.18 | Rédaction du Document |  | 5d | 2020-06-24 | 2020-07-01 | 164 | 323.71d | 0d |  |  | Assistant Chef de Projet (SEB) [20%]; Chef de Projet (QUE) [20%] | 14h | 700 |
| 166 | 1.1.6.19 | Rédaction de la Présentation |  | 3.57d | 2020-07-01 | 2020-07-07 | 165 | 323.71d |  |  |  | Assistant Chef de Projet (SEB) [20%]; Chef de Projet (QUE) [20%] | 10h | 500 |
| 167 | 1.1.6.20 | Livraison L04 | milestone | 0d | 2020-07-08 | 2020-07-08 |  | 0d |  | finish no earlier than 2020-07-08 | 2020-07-08 |  |  |  |
| 168 | 1.1.6.21 | Présentation L04 | milestone | 0d | 2020-07-17 | 2020-07-17 |  | 0d |  | finish no earlier than 2020-07-17 | 2020-07-17 |  |  |  |
| 169 | 1.2 | Réunion de Service (Alternants & Equipe INFO) | milestone | 0d | 2020-07-20 | 2020-07-20 |  | 0d |  | must start on 2020-07-20 |  |  |  |  |

| ID | WBS | Task | Type | Duration | Start | Finish | Predecessors | Total slack | Free slack | Constraint | Deadline | Resources | Work | Cost |
| --- | --- | --- | --- | --- | --- | --- | --- | --- | --- | --- | --- | --- | --- | --- |
| 170 | 1.3 | **Développement Application** |  | 18.12d? | 2020-07-20 | 2020-08-13 |  | 296.88d |  |  |  |  | 203h | 9,800 |
| 171 | 1.3.1 | **Développement** |  | 8.12d? | 2020-07-20 | 2020-07-30 |  | 296.88d |  |  |  |  | 91h | 3,640 |
| 172 | 1.3.1.1 | Prise de connaissance du projet |  | 5d? | 2020-07-20 | 2020-07-24 | 169 | 296.88d | 0d |  |  | Fabrice (RIL) [80%]; Martine (RIL) [80%] | 56h | 2,240 |
| 173 | 1.3.1.2 | Finalisation des éléments graphiques (interface) |  | 3.12d? | 2020-07-27 | 2020-07-30 | 172 | 296.88d | 0d |  |  | Fabrice (RIL) [80%]; Martine (RIL) [80%] | 35h | 1,400 |
| 174 | 1.3.1.3 | Réunion de Service (Equipe INFO) | milestone | 0d | 2020-07-30 | 2020-07-30 | 173 | 296.88d | 0d |  |  |  |  |  |
| 175 | 1.3.2 | **Test** |  | 10d? | 2020-07-30 | 2020-08-13 |  | 296.88d |  |  |  |  | 112h | 6,160 |
| 176 | 1.3.2.1 | Test Interne (équipe INFO) |  | 5d? | 2020-07-30 | 2020-08-06 | 174 | 296.88d | 0d |  |  | Christophe (RI) [80%]; Claire (Chef-Projet) [80%] | 56h | 3,360 |
| 177 | 1.3.2.2 | Retour de Test | milestone | 0d | 2020-08-06 | 2020-08-06 | 176 | 296.88d | 0d |  |  |  |  |  |
| 178 | 1.3.2.3 | Test Externe (équipe COMM) |  | 5d? | 2020-08-06 | 2020-08-13 | 177 | 296.88d | 0d |  |  | Morgane (COMM) [80%]; Philippe (RESCOMM) [80%] | 56h | 2,800 |
| 179 | 1.3.2.4 | Retour de Test | milestone | 0d | 2020-08-13 | 2020-08-13 | 178 | 296.88d |  |  |  |  |  |  |
| 180 | 1.4 | Réunion de Service (Direction / Equipe INFO / Equipe COMM) | milestone | 0d | 2020-08-31 | 2020-08-31 |  | 0d |  | must start on 2020-08-31 |  |  |  |  |
| 181 | 1.5 | Déploiement | milestone | 0d | 2020-08-31 | 2020-08-31 | 180 | 275d | 0d |  |  |  |  |  |
| 182 | 1.6 | Formation |  | 10d? | 2020-08-31 | 2020-09-11 | 181 | 275d |  |  |  | Christophe (RI) [80%] | 56h | 3,360 |
| 183 | 2 | CLOTURE PROJET | milestone | 0d | 2020-10-01 | 2020-10-01 |  | 0d |  | must start on 2020-10-01 | 2020-12-01 |  |  |  |
| 184 | 3 | MAINTENANCE |  | 262d? | 2020-10-01 | 2021-10-01 |  | 0d |  | finish no earlier than 2021-10-01 |  | Fabrice (MAINT) [10%]; Martine (MAINT) [10%] | 366.8h | 14,672 |
